# Willow way village

How a schedule from Primavera P6 changed from version to version. A marks actual dates.

## Version 1 (data date 2026-05-16, saved 2026-05-18, file Willow_way_village_schedule_20260518_1645.xer)

| ID | WBS | Task | Duration | Start | Finish | Predecessors | Complete | Total float | Constraint |
| --- | --- | --- | --- | --- | --- | --- | --- | --- | --- |
|  | Building VA (North) | **Building VA (North)** |  | 2026-05-16 | 2026-07-03 |  |  |  |  |
| A0001 |  | Building VA (North) - Layout - Labor | 7d | 2026-05-16 A | 2026-05-17 A |  | 100% |  |  |
| A0002 |  | Building VA (North) - Framing - Labor | 3d | 2026-05-22 A | 2026-05-17 A | A0001 | 100% |  |  |
| A0004 |  | Building VA (North) - Shear Wall - Labor | 2d | 2026-06-03 | 2026-06-04 | A0003 |  | 0d | as late as possible |
| A0003 |  | Building VA (North) - Sheathing - Labor | 1d | 2026-06-18 A | 2026-05-17 A | A0002 SS | 100% |  |  |
| A0005 |  | Building VA (North) - Floor Truss - Labor | 3d | 2026-06-25 A | 2026-05-17 A | A0004 | 100% |  |  |
| A0006 |  | Building VA (North) - Roof Truss - Labor | 2d | 2026-07-10 A | 2026-05-17 A | A0005 | 100% |  |  |
| A0007 |  | Building VA (North) - Hardware - Labor | 2d | 2026-07-28 A | 2026-05-17 A | A0006 | 100% |  |  |
| A0008 |  | Building VA (North) - House Wrap - Labor | 2d | 2026-08-03 A | 2026-05-17 A | A0007 FS+1d | 100% |  |  |
| A0009 |  | Building VA (North) - Stair Labor | 2d | 2026-08-05 A | 2026-05-17 A | A0008 | 100% |  |  |
| A0010 |  | Building VA (North) - Punchout - Labor | 5d | 2026-08-06 A | 2026-07-03 | A0009 | 40% | 0d |  |
|  | Building VA (South) | **Building VA (South)** |  | 2026-05-16 | 2026-06-26 |  |  |  |  |
| A0011 |  | Building VA (South) - Layout - Labor | 5d | 2026-05-16 A | 2026-05-17 A |  | 100% |  |  |
| A0012 |  | Building VA (South) - Framing - Labor | 5d | 2026-05-22 A | 2026-05-17 A | A0011 | 100% |  |  |
| A0013 |  | Building VA (South) - Sheathing - Labor | 5d | 2026-06-18 A | 2026-05-17 A | A0012 | 100% |  |  |
| A0014 |  | Building VA (South) - Shear Wall - Labor | 2d | 2026-06-25 | 2026-06-26 | A0013 |  | 0d | as late as possible |
| A0015 |  | Building VA (South) - Floor Truss - Labor | 13d | 2026-06-26 A | 2026-05-17 A | A0014 | 100% |  |  |
| A0016 |  | Building VA (South) - Roof Truss - Labor | 15d | 2026-07-11 A | 2026-05-17 A | A0015 | 100% |  |  |
| A0017 |  | Building VA (South) - Hardware - Labor | 5d | 2026-07-29 A | 2026-05-17 A | A0016 | 100% |  |  |
| A0018 |  | Building VA (South) - House Wrap - Labor | 2d | 2026-08-04 A | 2026-05-17 A | A0017 | 100% |  |  |
| A0019 |  | Building VA (South) - Stair Labor | 1d | 2026-08-06 A | 2026-05-17 A | A0018 | 100% |  |  |
| A0020 |  | Building VA (South) - Punchout - Labor | 5d | 2026-08-07 A | 2026-05-17 A | A0019 | 100% |  |  |
|  | Club house VB (North | **Club house VB (North)** |  | 2026-05-16 | 2026-06-05 |  |  |  |  |
| A0021 |  | Club house VB (North) - Layout - Labor | 1d | 2026-05-16 A | 2026-05-17 A |  | 100% |  |  |
| A0022 |  | Club house VB (North) - Framing - Labor | 4d | 2026-05-18 A | 2026-05-17 A | A0021 | 100% |  |  |
| A0023 |  | Club house VB (North) - Sheathing - Labor | 1d | 2026-05-22 A | 2026-05-17 A | A0022 | 100% |  |  |
| A0024 |  | Club house VB (North) - Shear Wall - Labor | 1d | 2026-05-25 | 2026-05-25 | A0023 |  | 0d | as late as possible |
| A0025 |  | Club house VB (North) - Roof Truss - Labor | 8d | 2026-05-25 A | 2026-05-17 A | A0024 | 100% |  |  |
| A0026 |  | Club house VB (North) - Hardware - Labor | 1d | 2026-06-03 A | 2026-05-17 A | A0025 | 100% |  |  |
| A0027 |  | Club house VB (North) - House Wrap - Labor | 1d | 2026-06-05 | 2026-06-05 | A0026 |  | 0d | as late as possible |
| A0028 |  | Club house VB (North) - Punchout - Labor | 1d | 2026-06-05 A | 2026-05-17 A | A0027 | 100% |  |  |
|  | Mail Kiosk (North) | **Mail Kiosk (North)** |  | 2026-05-16 | 2026-05-23 |  |  |  |  |
| A0029 |  | Mail Kiosk (North) - Layout - Labor | 1d | 2026-05-16 A | 2026-05-17 A |  | 100% |  |  |
| A0030 |  | Mail Kiosk (North) - Framing - Labor | 1d | 2026-05-18 A | 2026-05-17 A | A0029 | 100% |  |  |
| A0031 |  | Mail Kiosk (North) - Sheathing - Labor | 1d | 2026-05-19 A | 2026-05-17 A | A0030 | 100% |  |  |
| A0032 |  | Mail Kiosk (North) - Roof Truss - Labor | 1d | 2026-05-20 A | 2026-05-17 A | A0031 | 100% |  |  |
| A0033 |  | Mail Kiosk (North) - Hardware - Labor | 1d | 2026-05-21 A | 2026-05-17 A | A0032 | 100% |  |  |
| A0034 |  | Mail Kiosk (North) - Punchout - Labor | 1d | 2026-05-23 | 2026-05-23 | A0033 |  | 0d | as late as possible |
|  | Mail Kiosk (South) | **Mail Kiosk (South)** |  | 2026-05-16 | 2026-05-23 |  |  |  |  |
| A0035 |  | Mail Kiosk (South) - Layout - Labor | 1d | 2026-05-16 A | 2026-05-17 A |  | 100% |  |  |
| A0036 |  | Mail Kiosk (South) - Framing - Labor | 1d | 2026-05-18 A | 2026-05-17 A | A0035 | 100% |  |  |
| A0037 |  | Mail Kiosk (South) - Sheathing - Labor | 1d | 2026-05-19 A | 2026-05-17 A | A0036 | 100% |  |  |
| A0038 |  | Mail Kiosk (South) - Roof Truss - Labor | 1d | 2026-05-20 A | 2026-05-17 A | A0037 | 100% |  |  |
| A0039 |  | Mail Kiosk (South) - Hardware - Labor | 1d | 2026-05-21 A | 2026-05-17 A | A0038 | 100% |  |  |
| A0040 |  | Mail Kiosk (South) - Punchout - Labor | 1d | 2026-05-23 | 2026-05-23 | A0039 |  | 0d | as late as possible |
|  | Trash Enclosure (Nor | **Trash Enclosure (North)** |  | 2026-05-16 | 2026-05-22 |  |  |  |  |
| A0041 |  | Trash Enclosure (North) - Layout - Labor | 1d | 2026-05-16 | 2026-05-18 |  |  | 0d | as late as possible |
| A0042 |  | Trash Enclosure (North) - Framing - Labor | 1d | 2026-05-18 A | 2026-05-19 | A0041 | 69% | 0d |  |
| A0043 |  | Trash Enclosure (North) - Sheathing - Labor | 1d | 2026-05-20 | 2026-05-20 | A0042 |  | 0d | as late as possible |
| A0044 |  | Trash Enclosure (North) - Hardware - Labor | 1d | 2026-05-21 | 2026-05-21 | A0043 |  | 0d | as late as possible |
| A0045 |  | Trash Enclosure (North) - Punchout - Labor | 1d | 2026-05-22 | 2026-05-22 | A0044 |  | 0d | as late as possible |
|  | Trash Enclosure (Sou | **Trash Enclosure (South)** |  | 2026-05-16 | 2026-05-29 |  |  |  |  |
| A0046 |  | Trash Enclosure (South) - Layout - Labor | 5d | 2026-05-16 | 2026-05-20 |  |  | 0d | as late as possible |
| A0047 |  | Trash Enclosure (South) - Framing - Labor | 5d | 2026-05-18 A | 2026-05-26 | A0046 | 69% | 0d |  |
| A0048 |  | Trash Enclosure (South) - Sheathing - Labor | 1d | 2026-05-27 | 2026-05-27 | A0047 |  | 0d | as late as possible |
| A0049 |  | Trash Enclosure (South) - Hardware - Labor | 1d | 2026-05-28 | 2026-05-28 | A0048 |  | 0d | as late as possible |
| A0050 |  | Trash Enclosure (South) - Punchout - Labor | 1d | 2026-05-29 | 2026-05-29 | A0049 |  | 0d | as late as possible |

## Version 2 (data date 2026-05-18, saved 2026-06-02, file Willow_way_village_schedule_20260602_2320.xer)

Last finish 2026-07-03 → 2026-08-03 (+31d).

Changed:

| ID | Task | Start | Finish | Duration | Predecessors | Other |
| --- | --- | --- | --- | --- | --- | --- |
| Building | **Building VA (North)** | 2026-05-16 → 2026-05-18 (+2d) | 2026-07-03 → 2026-08-03 (+31d) |  |  |  |
| A0001 | Building VA (North) - Layout - Labor | 2026-05-16 A → 2026-05-18 A (+2d) | 2026-05-17 A → 2026-05-18 A (+1d) | 7d → 5d |  |  |
| A0002 | Building VA (North) - Framing - Labor | 2026-05-22 A → 2026-05-25 A (+3d) | 2026-05-17 A → 2026-05-18 A (+1d) | 3d → 2d |  |  |
| A0004 | Building VA (North) - Shear Wall - Labor | 2026-06-03 → 2026-06-02 (-1d) | 2026-06-04 → 2026-06-02 (-2d) | 2d → 1d |  | constraint as late as possible → none |
| A0003 | Building VA (North) - Sheathing - Labor | 2026-06-18 A → 2026-06-10 A (-8d) | 2026-05-17 A → 2026-05-18 A (+1d) | 1d → 5d | A0002 SS → A0002 |  |
| A0005 | Building VA (North) - Floor Truss - Labor | 2026-06-25 A → 2026-06-17 A (-8d) | 2026-05-17 A → 2026-05-18 A (+1d) | 3d → 4d |  |  |
| A0006 | Building VA (North) - Roof Truss - Labor | 2026-07-10 A → 2026-07-02 A (-8d) | 2026-05-17 A → 2026-05-18 A (+1d) | 2d → 8d |  |  |
| A0007 | Building VA (North) - Hardware - Labor | 2026-07-28 A → 2026-07-20 A (-8d) | 2026-05-17 A → 2026-05-18 A (+1d) | 2d → 4d |  |  |
| A0008 | Building VA (North) - House Wrap - Labor | 2026-08-03 A → 2026-07-25 A (-9d) | 2026-05-17 A → 2026-05-18 A (+1d) | 2d → 3d | A0007 FS+1d → A0007 |  |
| A0009 | Building VA (North) - Stair Labor | 2026-08-05 A → 2026-07-28 A (-8d) | 2026-05-17 A → 2026-05-18 A (+1d) | 2d → 1d |  |  |
| A0010 | Building VA (North) - Punchout - Labor | 2026-08-06 A → 2026-07-29 A (-8d) | 2026-07-03 → 2026-08-03 (+31d) |  |  |  |
| Building | **Building VA (South)** | 2026-05-16 → 2026-05-18 (+2d) | 2026-06-26 → 2026-06-13 (-13d) |  |  |  |
| A0011 | Building VA (South) - Layout - Labor | 2026-05-16 A → 2026-05-18 A (+2d) | 2026-05-17 A → 2026-05-18 A (+1d) | 5d → 6d |  |  |
| A0012 | Building VA (South) - Framing - Labor | 2026-05-22 A → 2026-05-25 A (+3d) | 2026-05-17 A → 2026-05-18 A (+1d) | 5d → 4d |  |  |
| A0014 | Building VA (South) - Shear Wall - Labor | 2026-06-25 → 2026-06-11 (-14d) | 2026-06-26 → 2026-06-13 (-13d) | 2d → 3d |  | constraint as late as possible → none |
| A0013 | Building VA (South) - Sheathing - Labor | 2026-06-18 A → 2026-06-20 A (+2d) | 2026-05-17 A → 2026-05-18 A (+1d) |  |  |  |
| A0015 | Building VA (South) - Floor Truss - Labor | 2026-06-26 A → 2026-06-29 A (+3d) | 2026-05-17 A → 2026-05-18 A (+1d) |  |  |  |
| A0016 | Building VA (South) - Roof Truss - Labor | 2026-07-11 A → 2026-07-14 A (+3d) | 2026-05-17 A → 2026-05-18 A (+1d) |  |  |  |
| A0017 | Building VA (South) - Hardware - Labor | 2026-07-29 A → 2026-07-31 A (+2d) | 2026-05-17 A → 2026-05-18 A (+1d) |  |  |  |
| A0018 | Building VA (South) - House Wrap - Labor | 2026-08-04 A → 2026-08-06 A (+2d) | 2026-05-17 A → 2026-05-18 A (+1d) |  |  |  |
| A0019 | Building VA (South) - Stair Labor | 2026-08-06 A → 2026-08-08 A (+2d) | 2026-05-17 A → 2026-05-18 A (+1d) |  |  |  |
| A0020 | Building VA (South) - Punchout - Labor | 2026-08-07 A → 2026-08-10 A (+3d) | 2026-05-17 A → 2026-05-18 A (+1d) |  |  |  |
| Clubhous | **Club house VB (North)** | 2026-05-16 → 2026-05-18 (+2d) | 2026-06-05 → 2026-06-06 (+1d) |  |  |  |
| A0021 | Club house VB (North) - Layout - Labor | 2026-05-16 A → 2026-05-18 A (+2d) | 2026-05-17 A → 2026-05-18 A (+1d) |  |  |  |
| A0022 | Club house VB (North) - Framing - Labor | 2026-05-18 A → 2026-05-20 A (+2d) | 2026-05-17 A → 2026-05-18 A (+1d) |  |  |  |
| A0023 | Club house VB (North) - Sheathing - Labor | 2026-05-22 A → 2026-05-25 A (+3d) | 2026-05-17 A → 2026-05-18 A (+1d) |  |  |  |
| A0024 | Club house VB (North) - Shear Wall - Labor | 2026-05-25 → 2026-05-26 (+1d) | 2026-05-25 → 2026-05-26 (+1d) |  |  | constraint as late as possible → none |
| A0025 | Club house VB (North) - Roof Truss - Labor | 2026-05-25 A → 2026-05-27 A (+2d) | 2026-05-17 A → 2026-05-18 A (+1d) |  |  |  |
| A0026 | Club house VB (North) - Hardware - Labor | 2026-06-03 A → 2026-06-05 A (+2d) | 2026-05-17 A → 2026-05-18 A (+1d) |  |  |  |
| A0027 | Club house VB (North) - House Wrap - Labor | 2026-06-05 → 2026-06-06 (+1d) | 2026-06-05 → 2026-06-06 (+1d) |  |  | constraint as late as possible → none |
| A0028 | Club house VB (North) - Punchout - Labor | 2026-06-05 A → 2026-06-08 A (+3d) | 2026-05-17 A → 2026-05-18 A (+1d) |  |  |  |
| MailKios | **Mail Kiosk (North)** | 2026-05-16 → 2026-05-18 (+2d) | 2026-05-23 → 2026-05-25 (+2d) |  |  |  |
| A0029 | Mail Kiosk (North) - Layout - Labor | 2026-05-16 A → 2026-05-18 A (+2d) | 2026-05-17 A → 2026-05-18 A (+1d) |  |  |  |
| A0030 | Mail Kiosk (North) - Framing - Labor | 2026-05-18 A → 2026-05-20 A (+2d) | 2026-05-17 A → 2026-05-18 A (+1d) |  |  |  |
| A0031 | Mail Kiosk (North) - Sheathing - Labor | 2026-05-19 A → 2026-05-21 A (+2d) | 2026-05-17 A → 2026-05-18 A (+1d) |  |  |  |
| A0032 | Mail Kiosk (North) - Roof Truss - Labor | 2026-05-20 A → 2026-05-22 A (+2d) | 2026-05-17 A → 2026-05-18 A (+1d) |  |  |  |
| A0033 | Mail Kiosk (North) - Hardware - Labor | 2026-05-21 A → 2026-05-23 A (+2d) | 2026-05-17 A → 2026-05-18 A (+1d) |  |  |  |
| A0034 | Mail Kiosk (North) - Punchout - Labor | 2026-05-23 → 2026-05-25 (+2d) | 2026-05-23 → 2026-05-25 (+2d) |  |  | constraint as late as possible → none |
| MailKios | **Mail Kiosk (South)** | 2026-05-16 → 2026-05-18 (+2d) | 2026-05-23 → 2026-05-25 (+2d) |  |  |  |
| A0035 | Mail Kiosk (South) - Layout - Labor | 2026-05-16 A → 2026-05-18 A (+2d) | 2026-05-17 A → 2026-05-18 A (+1d) |  |  |  |
| A0036 | Mail Kiosk (South) - Framing - Labor | 2026-05-18 A → 2026-05-20 A (+2d) | 2026-05-17 A → 2026-05-18 A (+1d) |  |  |  |
| A0037 | Mail Kiosk (South) - Sheathing - Labor | 2026-05-19 A → 2026-05-21 A (+2d) | 2026-05-17 A → 2026-05-18 A (+1d) |  |  |  |
| A0038 | Mail Kiosk (South) - Roof Truss - Labor | 2026-05-20 A → 2026-05-22 A (+2d) | 2026-05-17 A → 2026-05-18 A (+1d) |  |  |  |
| A0039 | Mail Kiosk (South) - Hardware - Labor | 2026-05-21 A → 2026-05-23 A (+2d) | 2026-05-17 A → 2026-05-18 A (+1d) |  |  |  |
| A0040 | Mail Kiosk (South) - Punchout - Labor | 2026-05-23 → 2026-05-25 (+2d) | 2026-05-23 → 2026-05-25 (+2d) |  |  | constraint as late as possible → none |
| TrashEnc | **Trash Enclosure (North)** | 2026-05-16 → 2026-05-18 (+2d) | 2026-05-22 → 2026-05-23 (+1d) |  |  |  |
| A0041 | Trash Enclosure (North) - Layout - Labor | 2026-05-16 → 2026-05-18 (+2d) | 2026-05-18 → 2026-05-19 (+1d) |  |  | constraint as late as possible → none |
| A0042 | Trash Enclosure (North) - Framing - Labor | 2026-05-18 A → 2026-05-20 A (+2d) | 2026-05-19 → 2026-05-20 (+1d) |  |  |  |
| A0043 | Trash Enclosure (North) - Sheathing - Labor | 2026-05-20 → 2026-05-21 (+1d) | 2026-05-20 → 2026-05-21 (+1d) |  |  | constraint as late as possible → none |
| A0044 | Trash Enclosure (North) - Hardware - Labor | 2026-05-21 → 2026-05-22 (+1d) | 2026-05-21 → 2026-05-22 (+1d) |  |  | constraint as late as possible → none |
| A0045 | Trash Enclosure (North) - Punchout - Labor | 2026-05-22 → 2026-05-23 (+1d) | 2026-05-22 → 2026-05-23 (+1d) |  |  | constraint as late as possible → none |
| TrashEnc | **Trash Enclosure (South)** | 2026-05-16 → 2026-05-18 (+2d) | 2026-05-29 → 2026-05-23 (-6d) |  |  |  |
| A0046 | Trash Enclosure (South) - Layout - Labor | 2026-05-16 → 2026-05-18 (+2d) | 2026-05-20 → 2026-05-19 (-1d) | 5d → 1d |  | constraint as late as possible → none |
| A0047 | Trash Enclosure (South) - Framing - Labor | 2026-05-18 A → 2026-05-20 A (+2d) | 2026-05-26 → 2026-05-20 (-6d) | 5d → 1d |  |  |
| A0048 | Trash Enclosure (South) - Sheathing - Labor | 2026-05-27 → 2026-05-21 (-6d) | 2026-05-27 → 2026-05-21 (-6d) |  |  | constraint as late as possible → none |
| A0049 | Trash Enclosure (South) - Hardware - Labor | 2026-05-28 → 2026-05-22 (-6d) | 2026-05-28 → 2026-05-22 (-6d) |  |  | constraint as late as possible → none |
| A0050 | Trash Enclosure (South) - Punchout - Labor | 2026-05-29 → 2026-05-23 (-6d) | 2026-05-29 → 2026-05-23 (-6d) |  |  | constraint as late as possible → none |

## Version 3 (data date 2026-05-18, saved 2026-05-18, file Willow_way_village_schedule_20260518_1723.xer)

Last finish stays 2026-08-03.

Changed:

| ID | Task | Start | Finish | Duration | Other |
| --- | --- | --- | --- | --- | --- |
| A0002 | Building VA (North) - Framing - Labor |  |  | 2d → 14d |  |
| A0004 | Building VA (North) - Shear Wall - Labor | 2026-06-02 → 2026-06-16 (+14d) | 2026-06-02 → 2026-06-16 (+14d) |  | constraint none → as late as possible |
| A0005 | Building VA (North) - Floor Truss - Labor |  |  | 4d → 13d |  |
| A0006 | Building VA (North) - Roof Truss - Labor |  |  | 8d → 15d |  |
| A0007 | Building VA (North) - Hardware - Labor |  |  | 4d → 5d |  |
| A0008 | Building VA (North) - House Wrap - Labor |  |  | 3d → 2d |  |
| Building VA (South) | **Building VA (South)** |  | 2026-06-13 → 2026-06-27 (+14d) |  |  |
| A0011 | Building VA (South) - Layout - Labor |  |  | 6d → 5d |  |
| A0012 | Building VA (South) - Framing - Labor |  |  | 4d → 23d |  |
| A0014 | Building VA (South) - Shear Wall - Labor | 2026-06-11 → 2026-06-26 (+15d) | 2026-06-13 → 2026-06-27 (+14d) | 3d → 2d | constraint none → as late as possible |
| A0024 | Club house VB (North) - Shear Wall - Labor |  |  |  | constraint none → as late as possible |
| A0027 | Club house VB (North) - House Wrap - Labor |  |  |  | constraint none → as late as possible |
| A0034 | Mail Kiosk (North) - Punchout - Labor |  |  |  | constraint none → as late as possible |
| A0040 | Mail Kiosk (South) - Punchout - Labor |  |  |  | constraint none → as late as possible |
| A0041 | Trash Enclosure (North) - Layout - Labor |  |  |  | constraint none → as late as possible |
| A0043 | Trash Enclosure (North) - Sheathing - Labor |  |  |  | constraint none → as late as possible |
| A0044 | Trash Enclosure (North) - Hardware - Labor |  |  |  | constraint none → as late as possible |
| A0045 | Trash Enclosure (North) - Punchout - Labor |  |  |  | constraint none → as late as possible |
| A0046 | Trash Enclosure (South) - Layout - Labor |  |  |  | constraint none → as late as possible |
| A0048 | Trash Enclosure (South) - Sheathing - Labor |  |  |  | constraint none → as late as possible |
| A0049 | Trash Enclosure (South) - Hardware - Labor |  |  |  | constraint none → as late as possible |
| A0050 | Trash Enclosure (South) - Punchout - Labor |  |  |  | constraint none → as late as possible |
