# denton

How a schedule from Primavera P6 changed from version to version. A marks actual dates.

## Version 1 (data date 2026-06-09, saved 2026-06-10, file denton_schedule_20260610_2357.xer)

| ID | WBS | Task | Duration | Start | Finish | Predecessors | Total float |
| --- | --- | --- | --- | --- | --- | --- | --- |
|  | 01Framin | **01 - Framing** |  | 2026-06-09 | 2027-03-03 |  |  |
| A0010 |  | Building 1 - Level 1 - Layout | 3d | 2026-06-09 | 2026-06-12 |  | 0d |
| A0020 |  | Building 1 - Level 1 - Wall Framing | 10d | 2026-06-12 | 2026-06-22 | A0010 | 0d |
| A0030 |  | Building 1 - Level 1 - Sheathing - Stair Wall - Plywood | 6d | 2026-06-22 | 2026-06-28 | A0020 | 0d |
| A0040 |  | Building 1 - Level 1 - Sheathing - Exterior | 6d | 2026-06-28 | 2026-07-04 | A0030 | 0d |
| A0050 |  | Building 1 - Level 1 - Sheathing - Corridor - Plywood | 6d | 2026-07-04 | 2026-07-10 | A0040 | 0d |
| A0060 |  | Building 1 - Level 1 - Sheathing - Demising - Plywood | 6d | 2026-07-10 | 2026-07-16 | A0050 | 0d |
| A0070 |  | Building 1 - Level 1 - Hardware | 4d | 2026-07-16 | 2026-07-20 | A0060 | 0d |
| A0080 |  | Building 1 - Level 1 - Punchout | 3d | 2026-07-20 | 2026-07-23 | A0070 | 0d |
| A0090 |  | Building 1 - Level 2 - Floor Truss - Unit - Prefabricated | 5d | 2026-07-23 | 2026-07-28 | A0080 | 0d |
| A0100 |  | Building 1 - Level 2 - Floor Truss - Corridor - Prefabricated | 5d | 2026-07-28 | 2026-08-02 | A0090 | 0d |
| A0110 |  | Building 1 - Level 2 - Layout | 3d | 2026-08-02 | 2026-08-05 | A0100 | 0d |
| A0120 |  | Building 1 - Level 2 - Wall Framing | 10d | 2026-08-05 | 2026-08-15 | A0110 | 0d |
| A0130 |  | Building 1 - Level 2 - Balcony - Framing | 3d | 2026-08-15 | 2026-08-18 | A0120 | 0d |
| A0140 |  | Building 1 - Level 2 - Sheathing - Stair Wall - Plywood | 6d | 2026-08-18 | 2026-08-24 | A0130 | 0d |
| A0150 |  | Building 1 - Level 2 - Sheathing - Exterior | 6d | 2026-08-24 | 2026-08-30 | A0140 | 0d |
| A0160 |  | Building 1 - Level 2 - Sheathing - Corridor - Plywood | 6d | 2026-08-30 | 2026-09-05 | A0150 | 0d |
| A0170 |  | Building 1 - Level 2 - Sheathing - Demising - Plywood | 6d | 2026-09-05 | 2026-09-11 | A0160 | 0d |
| A0180 |  | Building 1 - Level 2 - Hardware | 4d | 2026-09-11 | 2026-09-15 | A0170 | 0d |
| A0190 |  | Building 1 - Level 2 - Punchout | 3d | 2026-09-15 | 2026-09-18 | A0180 | 0d |
| A0200 |  | Building 1 - Level 3 - Floor Truss - Unit - Prefabricated | 5d | 2026-09-18 | 2026-09-23 | A0190 | 0d |
| A0210 |  | Building 1 - Level 3 - Floor Truss - Corridor - Prefabricated | 5d | 2026-09-23 | 2026-09-28 | A0200 | 0d |
| A0220 |  | Building 1 - Level 3 - Layout | 3d | 2026-09-28 | 2026-10-01 | A0210 | 0d |
| A0230 |  | Building 1 - Level 3 - Wall Framing | 10d | 2026-10-01 | 2026-10-11 | A0220 | 0d |
| A0240 |  | Building 1 - Level 3 - Balcony - Framing | 3d | 2026-10-11 | 2026-10-14 | A0230 | 0d |
| A0250 |  | Building 1 - Level 3 - Sheathing - Stair Wall - Plywood | 6d | 2026-10-14 | 2026-10-20 | A0240 | 0d |
| A0260 |  | Building 1 - Level 3 - Sheathing - Exterior | 6d | 2026-10-20 | 2026-10-26 | A0250 | 0d |
| A0270 |  | Building 1 - Level 3 - Sheathing - Corridor - Plywood | 6d | 2026-10-26 | 2026-11-01 | A0260 | 0d |
| A0280 |  | Building 1 - Level 3 - Sheathing - Demising - Plywood | 6d | 2026-11-01 | 2026-11-07 | A0270 | 0d |
| A0290 |  | Building 1 - Level 3 - Hardware | 4d | 2026-11-07 | 2026-11-11 | A0280 | 0d |
| A0300 |  | Building 1 - Level 3 - Punchout | 3d | 2026-11-11 | 2026-11-14 | A0290 | 0d |
| A0310 |  | Building 1 - Level 4 - Floor Truss - Unit - Prefabricated | 5d | 2026-11-14 | 2026-11-19 | A0300 | 0d |
| A0320 |  | Building 1 - Level 4 - Floor Truss - Corridor - Prefabricated | 5d | 2026-11-19 | 2026-11-24 | A0310 | 0d |
| A0330 |  | Building 1 - Level 4 - Layout | 3d | 2026-11-24 | 2026-11-27 | A0320 | 0d |
| A0340 |  | Building 1 - Level 4 - Wall Framing | 10d | 2026-11-27 | 2026-12-07 | A0330 | 0d |
| A0350 |  | Building 1 - Level 4 - Balcony - Framing | 3d | 2026-12-07 | 2026-12-10 | A0340 | 0d |
| A0360 |  | Building 1 - Level 4 - Sheathing - Stair Wall - Plywood | 6d | 2026-12-10 | 2026-12-16 | A0350 | 0d |
| A0370 |  | Building 1 - Level 4 - Sheathing - Exterior | 6d | 2026-12-16 | 2026-12-22 | A0360 | 0d |
| A0380 |  | Building 1 - Level 4 - Sheathing - Demising - Plywood | 6d | 2026-12-22 | 2026-12-28 | A0370 | 0d |
| A0390 |  | Building 1 - Level 4 - Hardware | 4d | 2026-12-28 | 2027-01-01 | A0380 | 0d |
| A0400 |  | Building 1 - Level 4 - Punchout | 3d | 2027-01-01 | 2027-01-04 | A0390 | 0d |
| A0410 |  | Building 1 - Level 5 - Floor Truss - Unit - Prefabricated | 5d | 2027-01-04 | 2027-01-09 | A0400 | 0d |
| A0420 |  | Building 1 - Level 5 - Floor Truss - Corridor - Prefabricated | 5d | 2027-01-09 | 2027-01-14 | A0410 | 0d |
| A0430 |  | Building 1 - Level 5 - Layout | 3d | 2027-01-14 | 2027-01-17 | A0420 | 0d |
| A0440 |  | Building 1 - Level 5 - Wall Framing | 10d | 2027-01-17 | 2027-01-27 | A0430 | 0d |
| A0450 |  | Building 1 - Level 5 - Balcony - Framing | 3d | 2027-01-27 | 2027-01-30 | A0440 | 0d |
| A0460 |  | Building 1 - Level 5 - Sheathing - Stair Wall - Plywood | 6d | 2027-01-30 | 2027-02-05 | A0450 | 0d |
| A0470 |  | Building 1 - Level 5 - Sheathing - Exterior | 6d | 2027-02-05 | 2027-02-11 | A0460 | 0d |
| A0480 |  | Building 1 - Level 5 - Sheathing - Demising - Plywood | 6d | 2027-02-11 | 2027-02-17 | A0470 | 0d |
| A0490 |  | Building 1 - Level 5 - Hardware | 4d | 2027-02-17 | 2027-02-21 | A0480 | 0d |
| A0500 |  | Building 1 - Level 5 - Punchout | 3d | 2027-02-21 | 2027-02-24 | A0490 | 0d |
| A0510 |  | Building 1 - Roof Truss | 7d | 2027-02-24 | 2027-03-03 | A0500 | 0d |

## Version 2 (data date 2026-06-13, saved 2026-06-08, file denton_schedule_20260608_2355.xer)

Last finish 2027-03-03 → 2026-12-08 (-85d).

Changed:

| ID | Task | Start | Finish | Duration | Predecessors |
| --- | --- | --- | --- | --- | --- |
| 01Framin | **01 - Framing** | 2026-06-09 → 2026-06-13 (+4d) | 2027-03-03 → 2026-12-08 (-85d) |  |  |
| A0001 | Building 1 - Level 1 - Layout | 2026-06-09 → 2026-06-13 (+4d) | 2026-06-12 → 2026-06-16 (+4d) |  |  |
| A0002 | Building 1 - Level 1 - Wall Framing | 2026-06-12 → 2026-06-17 (+5d) | 2026-06-22 → 2026-06-19 (-3d) | 10d → 3d |  |
| A0003 | Building 1 - Level 1 - Sheathing - Stair Wall - Plywood | 2026-06-22 → 2026-06-20 (-2d) | 2026-06-28 → 2026-06-23 (-5d) | 6d → 3d |  |
| A0004 | Building 1 - Level 1 - Hardware | 2026-07-16 → 2026-06-24 (-22d) | 2026-07-20 → 2026-06-26 (-24d) | 4d → 3d | A0007 → A0003 |
| A0005 | Building 1 - Level 1 - Sheathing - Exterior | 2026-06-28 → 2026-06-27 (-1d) | 2026-07-04 → 2026-06-30 (-4d) | 6d → 3d | A0003 → A0004 |
| A0006 | Building 1 - Level 1 - Sheathing - Corridor - Plywood | 2026-07-04 → 2026-07-01 (-3d) | 2026-07-10 → 2026-07-03 (-7d) | 6d → 3d |  |
| A0007 | Building 1 - Level 1 - Sheathing - Demising - Plywood | 2026-07-10 → 2026-07-04 (-6d) | 2026-07-16 → 2026-07-07 (-9d) | 6d → 3d |  |
| A0008 | Building 1 - Level 1 - Punchout | 2026-07-20 → 2026-07-08 (-12d) | 2026-07-23 → 2026-07-10 (-13d) |  | A0004 → A0007 |
| A0009 | Building 1 - Level 2 - Layout | 2026-08-02 → 2026-07-11 (-22d) | 2026-08-05 → 2026-07-14 (-22d) |  | A0012 → A0008 |
| A0010 | Building 1 - Level 2 - Wall Framing | 2026-08-05 → 2026-07-15 (-21d) | 2026-08-15 → 2026-07-17 (-29d) | 10d → 3d |  |
| A0011 | Building 1 - Level 2 - Floor Truss - Unit - Prefabricated | 2026-07-23 → 2026-07-18 (-5d) | 2026-07-28 → 2026-07-21 (-7d) | 5d → 3d | A0008 → A0010 |
| A0012 | Building 1 - Level 2 - Floor Truss - Corridor - Prefabricated | 2026-07-28 → 2026-07-22 (-6d) | 2026-08-02 → 2026-07-24 (-9d) | 5d → 3d |  |
| A0013 | Building 1 - Level 2 - Sheathing - Stair Wall - Plywood | 2026-08-18 → 2026-07-25 (-24d) | 2026-08-24 → 2026-07-28 (-27d) | 6d → 3d | A0019 → A0012 |
| A0014 | Building 1 - Level 2 - Hardware | 2026-09-11 → 2026-07-29 (-44d) | 2026-09-15 → 2026-07-31 (-46d) | 4d → 3d | A0017 → A0013 |
| A0015 | Building 1 - Level 2 - Sheathing - Exterior | 2026-08-24 → 2026-08-01 (-23d) | 2026-08-30 → 2026-08-04 (-26d) | 6d → 3d | A0013 → A0014 |
| A0016 | Building 1 - Level 2 - Sheathing - Corridor - Plywood | 2026-08-30 → 2026-08-05 (-25d) | 2026-09-05 → 2026-08-07 (-29d) | 6d → 3d |  |
| A0017 | Building 1 - Level 2 - Sheathing - Demising - Plywood | 2026-09-05 → 2026-08-08 (-28d) | 2026-09-11 → 2026-08-11 (-31d) | 6d → 3d |  |
| A0018 | Building 1 - Level 2 - Punchout | 2026-09-15 → 2026-08-12 (-34d) | 2026-09-18 → 2026-08-14 (-35d) |  | A0014 → A0017 |
| A0019 | Building 1 - Level 2 - Balcony - Framing |  |  |  | A0010 → A0018 |
| A0020 | Building 1 - Level 3 - Layout | 2026-09-28 → 2026-08-19 (-40d) | 2026-10-01 → 2026-08-21 (-41d) |  | A0023 → A0019 |
| A0021 | Building 1 - Level 3 - Wall Framing | 2026-10-01 → 2026-08-22 (-40d) | 2026-10-11 → 2026-08-25 (-47d) | 10d → 3d |  |
| A0022 | Building 1 - Level 3 - Floor Truss - Unit - Prefabricated | 2026-09-18 → 2026-08-26 (-23d) | 2026-09-23 → 2026-08-28 (-26d) | 5d → 3d | A0018 → A0021 |
| A0023 | Building 1 - Level 3 - Floor Truss - Corridor - Prefabricated | 2026-09-23 → 2026-08-29 (-25d) | 2026-09-28 → 2026-09-01 (-27d) | 5d → 3d |  |
| A0024 | Building 1 - Level 3 - Sheathing - Stair Wall - Plywood | 2026-10-14 → 2026-09-02 (-42d) | 2026-10-20 → 2026-09-04 (-46d) | 6d → 3d | A0030 → A0023 |
| A0025 | Building 1 - Level 3 - Hardware | 2026-11-07 → 2026-09-05 (-63d) | 2026-11-11 → 2026-09-08 (-64d) | 4d → 3d | A0028 → A0024 |
| A0026 | Building 1 - Level 3 - Sheathing - Exterior | 2026-10-20 → 2026-09-09 (-41d) | 2026-10-26 → 2026-09-11 (-45d) | 6d → 3d | A0024 → A0025 |
| A0027 | Building 1 - Level 3 - Sheathing - Corridor - Plywood | 2026-10-26 → 2026-09-12 (-44d) | 2026-11-01 → 2026-09-15 (-47d) | 6d → 3d |  |
| A0028 | Building 1 - Level 3 - Sheathing - Demising - Plywood | 2026-11-01 → 2026-09-16 (-46d) | 2026-11-07 → 2026-09-18 (-50d) | 6d → 3d |  |
| A0029 | Building 1 - Level 3 - Punchout | 2026-11-11 → 2026-09-19 (-53d) | 2026-11-14 → 2026-09-22 (-53d) |  | A0025 → A0028 |
| A0030 | Building 1 - Level 3 - Balcony - Framing | 2026-10-11 → 2026-09-23 (-18d) | 2026-10-14 → 2026-09-25 (-19d) |  | A0021 → A0029 |
| A0031 | Building 1 - Level 4 - Layout | 2026-11-24 → 2026-09-26 (-59d) | 2026-11-27 → 2026-09-29 (-59d) |  | A0034 → A0030 |
| A0032 | Building 1 - Level 4 - Wall Framing | 2026-11-27 → 2026-09-30 (-58d) | 2026-12-07 → 2026-10-02 (-66d) | 10d → 3d |  |
| A0033 | Building 1 - Level 4 - Floor Truss - Unit - Prefabricated | 2026-11-14 → 2026-10-03 (-42d) | 2026-11-19 → 2026-10-06 (-44d) | 5d → 3d | A0029 → A0032 |
| A0034 | Building 1 - Level 4 - Floor Truss - Corridor - Prefabricated | 2026-11-19 → 2026-10-07 (-43d) | 2026-11-24 → 2026-10-09 (-46d) | 5d → 3d |  |
| A0035 | Building 1 - Level 4 - Sheathing - Stair Wall - Plywood | 2026-12-10 → 2026-10-10 (-61d) | 2026-12-16 → 2026-10-13 (-64d) | 6d → 3d | A0041 → A0034 |
| A0036 | Building 1 - Roof Truss | 2027-02-24 → 2026-10-14 (-133d) | 2027-03-03 → 2026-10-16 (-138d) | 7d → 3d | A0050 → A0035 |
| A0037 | Building 1 - Level 4 - Hardware | 2026-12-28 → 2026-10-17 (-72d) | 2027-01-01 → 2026-10-20 (-73d) | 4d → 3d | A0039 → A0036 |
| A0038 | Building 1 - Level 4 - Sheathing - Exterior | 2026-12-16 → 2026-10-21 (-56d) | 2026-12-22 → 2026-10-23 (-60d) | 6d → 3d | A0035 → A0037 |
| A0039 | Building 1 - Level 4 - Sheathing - Demising - Plywood | 2026-12-22 → 2026-10-24 (-59d) | 2026-12-28 → 2026-10-27 (-62d) | 6d → 3d |  |
| A0040 | Building 1 - Level 4 - Punchout | 2027-01-01 → 2026-10-28 (-65d) | 2027-01-04 → 2026-10-30 (-66d) |  | A0037 → A0039 |
| A0041 | Building 1 - Level 4 - Balcony - Framing | 2026-12-07 → 2026-10-31 (-37d) | 2026-12-10 → 2026-11-03 (-37d) |  | A0032 → A0040 |
| A0042 | Building 1 - Level 5 - Layout | 2027-01-14 → 2026-11-04 (-71d) | 2027-01-17 → 2026-11-06 (-72d) |  | A0045 → A0041 |
| A0043 | Building 1 - Level 5 - Wall Framing | 2027-01-17 → 2026-11-07 (-71d) | 2027-01-27 → 2026-11-10 (-78d) | 10d → 3d |  |
| A0044 | Building 1 - Level 5 - Floor Truss - Unit - Prefabricated | 2027-01-04 → 2026-11-11 (-54d) | 2027-01-09 → 2026-11-13 (-57d) | 5d → 3d | A0040 → A0043 |
| A0045 | Building 1 - Level 5 - Floor Truss - Corridor - Prefabricated | 2027-01-09 → 2026-11-14 (-56d) | 2027-01-14 → 2026-11-17 (-58d) | 5d → 3d |  |
| A0046 | Building 1 - Level 5 - Sheathing - Stair Wall - Plywood | 2027-01-30 → 2026-11-18 (-73d) | 2027-02-05 → 2026-11-20 (-77d) | 6d → 3d | A0051 → A0045 |
| A0047 | Building 1 - Level 5 - Hardware | 2027-02-17 → 2026-11-21 (-88d) | 2027-02-21 → 2026-11-24 (-89d) | 4d → 3d | A0049 → A0046 |
| A0048 | Building 1 - Level 5 - Sheathing - Exterior | 2027-02-05 → 2026-11-25 (-72d) | 2027-02-11 → 2026-11-27 (-76d) | 6d → 3d | A0046 → A0047 |
| A0049 | Building 1 - Level 5 - Sheathing - Demising - Plywood | 2027-02-11 → 2026-11-28 (-75d) | 2027-02-17 → 2026-12-01 (-78d) | 6d → 3d |  |
| A0050 | Building 1 - Level 5 - Punchout | 2027-02-21 → 2026-12-02 (-81d) | 2027-02-24 → 2026-12-04 (-82d) |  | A0047 → A0049 |
| A0051 | Building 1 - Level 5 - Balcony - Framing | 2027-01-27 → 2026-12-05 (-53d) | 2027-01-30 → 2026-12-08 (-53d) |  | A0043 → A0050 |
